# cotizador_lua

Schedule from MS Project, 2024-09-16 to 2024-10-25, A marks actual dates.

## Calendars

- Estándar: Mon-Fri 09:00-13:00, 15:00-19:00; Sat-Sun off.

## Schedule

| ID | WBS | Task | Duration | Start | Finish | Predecessors | Complete | Remaining | Total slack | Free slack | Text1 |
| --- | --- | --- | --- | --- | --- | --- | --- | --- | --- | --- | --- |
| 1 | 1 | **Proyecto Cotizador** | 30d | 2024-09-16 09:00 A | 2024-10-25 19:00 |  | 42% | 17.35d | 0d |  |  |
| 2 | 1.1 | **Modelos Y BD** | 8.5d | 2024-09-16 09:00 A | 2024-09-26 13:00 |  | 54% | 3.95d | 0.9d |  | DEV1 |
| 3 | 1.1.1 | **Modelo Usuario** | 1.5d | 2024-09-16 09:00 A | 2024-09-17 13:00 |  | 90% | 0.15d | 0.05d |  | DEV1 |
| 4 | 1.1.1.1 | Login | 0.5d | 2024-09-16 09:00 A | 2024-09-16 13:00 |  | 90% | 0.05d | 0.9d | 0d | DEV1 |
| 5 | 1.1.1.2 | CRUD | 1d | 2024-09-16 15:00 A | 2024-09-17 13:00 | 4 | 90% | 0.1d | 0.05d | 0d | DEV1 |
| 6 | 1.1.2 | **Modelo Cliente** | 1d | 2024-09-17 15:00 A | 2024-09-18 13:00 |  | 50% | 0.5d | 0.45d |  | DEV1 |
| 7 | 1.1.2.1 | Login | 0.5d | 2024-09-17 15:00 A | 2024-09-17 19:00 | 5 | 10% | 0.45d | 0.45d | 0d | DEV1 |
| 8 | 1.1.2.2 | CRUD | 0.5d | 2024-09-18 09:00 A | 2024-09-18 13:00 | 7 | 90% | 0.05d | 0.45d | 0d | DEV1 |
| 9 | 1.1.3 | **Modelo Contacto** | 0.5d | 2024-09-18 15:00 A | 2024-09-18 19:00 |  | 90% | 0.05d | 0.45d |  | DEV1 |
| 10 | 1.1.3.1 | CRUD | 0.5d | 2024-09-18 15:00 A | 2024-09-18 19:00 | 8 | 90% | 0.05d | 0.45d | 0d | DEV1 |
| 11 | 1.1.4 | **Modelo Empresa** | 0.5d | 2024-09-19 09:00 A | 2024-09-19 13:00 |  | 90% | 0.05d | 0.9d |  | DEV1 |
| 12 | 1.1.4.1 | CRUD | 0.5d | 2024-09-19 09:00 A | 2024-09-19 13:00 | 10 | 90% | 0.05d | 0.9d | 0d | DEV1 |
| 13 | 1.1.5 | **Modelo Cotizacion** | 3d | 2024-09-19 15:00 | 2024-09-24 13:00 |  |  |  | 0.9d |  | DEV1 |
| 14 | 1.1.5.1 | CRUD | 1d | 2024-09-19 15:00 | 2024-09-20 13:00 | 12 |  |  | 0.9d | 0d | DEV1 |
| 15 | 1.1.5.2 | Detalle CRUD Cotizacion | 1d | 2024-09-20 15:00 | 2024-09-23 13:00 | 14 |  |  | 0.9d | 0d | DEV1 |
| 16 | 1.1.5.3 | Detalle CRUD Cotizacion Adicional | 1d | 2024-09-23 15:00 | 2024-09-24 13:00 | 15 |  |  | 0.9d | 0d | DEV1 |
| 17 | 1.1.6 | **Modelo Categoria** | 1d | 2024-09-24 15:00 A | 2024-09-25 13:00 |  | 90% | 0.1d | 0.9d |  | DEV1 |
| 18 | 1.1.6.1 | CRUD | 1d | 2024-09-24 15:00 A | 2024-09-25 13:00 | 16 | 90% | 0.1d | 0.9d | 0d | DEV1 |
| 19 | 1.1.7 | **Modelo Producto** | 1d | 2024-09-25 15:00 A | 2024-09-26 13:00 |  | 90% | 0.1d | 0.9d |  | DEV1 |
| 20 | 1.1.7.1 | CRUD | 1d | 2024-09-25 15:00 A | 2024-09-26 13:00 | 18 | 90% | 0.1d | 0.9d | 0d | DEV1 |
| 21 | 1.2 | **Controllers** | 7.5d | 2024-09-26 15:00 A | 2024-10-07 19:00 |  | 66% | 2.55d | 0.45d |  | DEV1 |
| 22 | 1.2.1 | Usuario | 1d | 2024-09-26 15:00 A | 2024-09-27 13:00 | 20 | 90% | 0.1d | 0.9d | 0d | DEV1 |
| 23 | 1.2.2 | Cotizacion | 2d | 2024-09-27 15:00 | 2024-10-01 13:00 | 22 |  |  | 0.9d | 0d | DEV1 |
| 24 | 1.2.3 | Producto | 1d | 2024-10-01 15:00 A | 2024-10-02 13:00 | 23 | 90% | 0.1d | 0.9d | 0d | DEV1 |
| 25 | 1.2.4 | Categoria | 1d | 2024-10-02 15:00 A | 2024-10-03 13:00 | 24 | 90% | 0.1d | 0.9d | 0d | DEV1 |
| 26 | 1.2.5 | Cliente | 1d | 2024-10-03 15:00 A | 2024-10-04 13:00 | 25 | 90% | 0.1d | 0.9d | 0d | DEV1 |
| 27 | 1.2.6 | Contacto | 1d | 2024-10-04 15:00 A | 2024-10-07 13:00 | 26 | 90% | 0.1d | 0.45d | 0d | DEV1 |
| 28 | 1.2.7 | Empresa | 0.5d | 2024-10-07 15:00 A | 2024-10-07 19:00 | 27 | 90% | 0.05d | 0.45d | 0d | DEV1 |

| ID | WBS | Task | Duration | Start | Finish | Predecessors | Complete | Remaining | Total slack | Free slack | Text1 |
| --- | --- | --- | --- | --- | --- | --- | --- | --- | --- | --- | --- |
| 29 | 1.3 | **Vistas** | 10d | 2024-10-08 09:00 A | 2024-10-21 19:00 |  | 32% | 6.85d | 0d |  | DEV1 |
| 30 | 1.3.1 | Login | 0.5d | 2024-10-08 09:00 A | 2024-10-08 13:00 | 20, 28 | 90% | 0.05d | 0.9d | 0d | DEV1 |
| 31 | 1.3.2 | Login Cliente | 0.5d | 2024-10-08 15:00 | 2024-10-08 19:00 | 30 |  |  | 0.9d | 0d | DEV1 |
| 32 | 1.3.3 | Mant Usuario | 1d | 2024-10-09 09:00 A | 2024-10-09 19:00 | 31 | 90% | 0.1d | 0.45d | 0d | DEV1 |
| 33 | 1.3.4 | Mant Categoria | 0.5d | 2024-10-10 09:00 A | 2024-10-10 13:00 | 32 | 90% | 0.05d | 0.45d | 0d | DEV1 |
| 34 | 1.3.5 | Mant Producto | 0.5d | 2024-10-10 15:00 A | 2024-10-10 19:00 | 33 | 90% | 0.05d | 0.45d | 0d | DEV1 |
| 35 | 1.3.6 | Mant Cliente | 0.5d | 2024-10-11 09:00 A | 2024-10-11 13:00 | 34 | 90% | 0.05d | 0.45d | 0d | DEV1 |
| 36 | 1.3.7 | Mant Contacto | 0.5d | 2024-10-11 15:00 A | 2024-10-11 19:00 | 35 | 90% | 0.05d | 0d |  | DEV1 |
| 37 | 1.3.8 | Mant Cotizacion | 4d | 2024-10-14 09:00 | 2024-10-17 19:00 | 36 |  |  | 0d |  | DEV1 |
| 38 | 1.3.9 | List Cotizacion | 1d | 2024-10-18 09:00 | 2024-10-18 19:00 | 37 |  |  | 0d |  | DEV1 |
| 39 | 1.3.10 | List Cotizacion Cliente | 1d | 2024-10-21 09:00 | 2024-10-21 19:00 | 38 |  |  | 0d |  | DEV1 |
| 40 | 1.4 | **Pruebas** | 4d | 2024-10-22 09:00 | 2024-10-25 19:00 |  |  |  | 0d |  | DEV1 |
| 41 | 1.4.1 | Prueba de Usuario | 2d | 2024-10-22 09:00 | 2024-10-23 19:00 | 39 |  |  | 0d |  | DEV1 |
| 42 | 1.4.2 | Corecciones | 2d | 2024-10-24 09:00 | 2024-10-25 19:00 | 41 |  |  | 0d |  | DEV1 |
